# Pellet Plant Complex - Area Schedule (Demo)

Schedule from Primavera P6, 2026-01-05 to 2027-06-03, data date 2026-09-01, A marks actual dates.

## Calendars

- Site 6-Day (Mon-Sat) with holidays: Mon-Sat 08:00-12:00, 13:00-17:00; Sun off. Exceptions (off unless hours are given): 2026-01-26, 2026-03-04, 2026-04-03, 2026-08-15, 2026-10-02, 2026-10-20, 2026-11-09, 2026-12-25, 2027-01-26, 2027-03-22.
- Office 5-Day (Mon-Fri): Mon-Fri 09:00-13:00, 14:00-18:00; Sat-Sun off. Exceptions (off unless hours are given): 2026-01-26, 2026-03-04, 2026-04-03, 2026-08-15, 2026-10-02, 2026-10-20, 2026-11-09, 2026-12-25, 2027-01-26, 2027-03-22.

## Schedule

| ID | WBS | Activity | Type | Duration | Start | Finish | Predecessors | Complete | Planned start | Planned finish | Total float | Constraint | Calendar | Discipline |
| --- | --- | --- | --- | --- | --- | --- | --- | --- | --- | --- | --- | --- | --- | --- |
|  | GEN | **Project Milestones** |  |  | 2026-01-05 | 2027-06-03 |  |  |  |  |  |  |  |  |
| MS-1000 |  | Notice to proceed / Project start | milestone | 0d | 2026-01-05 A | 2026-01-05 A |  | 100% |  |  |  | start on or after 2026-01-05 |  |  |
| MS-9000 |  | Pellet plant complex - mechanical completion | milestone | 0d | 2027-06-03 | 2027-06-03 | PP1-ASS-C1190, PP1-AGB-C1190, PP1-GPB-C1190, PP1-IFB-C1190, PP2-ASS-C1190, PP2-GPB-C1190, PP2-SCH-C1190, FLT-FLB-C1190, FLT-RFB-C1190 |  |  |  | 0d |  |  |  |
|  | PP1 | **Pellet Plant-1** |  |  | 2026-01-07 | 2027-06-03 |  |  |  |  |  |  |  |  |
|  | PP1.ASS | **Additive Storage Shed** |  |  | 2026-01-07 | 2026-08-19 |  |  |  |  |  |  |  |  |
|  | PP1.ASS.E | **Engineering** |  |  | 2026-01-07 | 2026-03-26 |  |  |  |  |  |  |  |  |
| PP1-ASS-E1010 |  | Design basis & architectural layout |  | 16d | 2026-01-07 A | 2026-02-03 A | MS-1000 | 100% | 2026-01-05 | 2026-01-27 |  |  | Office 5-Day (Mon-Fri) | Architecture |
| PP1-ASS-E1020 |  | Structural design & IFC drawings |  | 28d | 2026-01-21 A | 2026-03-06 A | PP1-ASS-E1010 SS+5d | 100% | 2026-01-12 | 2026-02-19 |  |  | Office 5-Day (Mon-Fri) | Structural |
| PP1-ASS-E1030 |  | MEP design & drawings |  | 30d | 2026-02-09 A | 2026-03-26 A | PP1-ASS-E1010 | 100% | 2026-01-28 | 2026-03-11 |  |  | Office 5-Day (Mon-Fri) | MEP |
| PP1-ASS-E1040 |  | Drawing approval by client |  | 9d | 2026-03-09 A | 2026-03-26 A | PP1-ASS-E1020, PP1-ASS-E1030 FF | 100% | 2026-02-26 | 2026-03-11 |  |  | Office 5-Day (Mon-Fri) | Architecture |
|  | PP1.ASS.P | **Procurement** |  |  | 2026-03-09 | 2026-06-11 |  |  |  |  |  |  |  |  |
| PP1-ASS-P1050 |  | Structural steel - PO placement |  | 9d | 2026-03-09 A | 2026-03-18 A | PP1-ASS-E1020 | 100% | 2026-02-20 | 2026-03-02 |  |  |  | Structural |
| PP1-ASS-P1060 |  | Structural steel - fabrication & supply to site |  | 48d | 2026-03-23 A | 2026-05-18 A | PP1-ASS-P1050 | 100% | 2026-03-03 | 2026-04-29 |  |  |  | Structural |
| PP1-ASS-P1070 |  | MEP equipment - PO placement |  | 11d | 2026-03-28 A | 2026-04-10 A | PP1-ASS-E1030 | 100% | 2026-03-12 | 2026-03-24 |  |  |  | MEP |
| PP1-ASS-P1080 |  | MEP equipment - manufacturing & delivery |  | 58d | 2026-04-11 A | 2026-06-11 A | PP1-ASS-P1070 | 100% | 2026-03-25 | 2026-06-01 |  |  |  | MEP |
|  | PP1.ASS.C | **Construction** |  |  | 2026-01-09 | 2026-08-19 |  |  |  |  |  |  |  |  |
| PP1-ASS-C1090 |  | Site mobilisation & survey |  | 4d | 2026-01-09 A | 2026-01-14 A | MS-1000 | 100% | 2026-01-05 | 2026-01-08 |  |  |  | Civil |
| PP1-ASS-C1100 |  | Excavation |  | 14d | 2026-02-03 A | 2026-02-18 A | PP1-ASS-C1090, PP1-ASS-E1020 SS+10d | 100% | 2026-01-23 | 2026-02-09 |  |  |  | Civil |
| PP1-ASS-C1110 |  | PCC & foundation concreting |  | 25d | 2026-02-12 A | 2026-03-19 A | PP1-ASS-C1100 SS+7d | 100% | 2026-02-02 | 2026-03-02 |  |  |  | Civil |
| PP1-ASS-C1120 |  | Plinth beam & backfilling |  | 17d | 2026-03-25 A | 2026-04-13 A | PP1-ASS-C1110 | 100% | 2026-03-03 | 2026-03-23 |  |  |  | Civil |
| PP1-ASS-C1130 |  | Superstructure - RCC / steel erection |  | 45d | 2026-04-16 A | 2026-06-12 A | PP1-ASS-C1120, PP1-ASS-P1060 SS+15d | 100% | 2026-03-24 | 2026-05-15 |  |  |  | Structural |
| PP1-ASS-C1150 |  | Masonry & plastering |  | 30d | 2026-05-12 A | 2026-06-12 A | PP1-ASS-C1130 SS+20d | 100% | 2026-04-17 | 2026-05-21 |  |  |  | Civil |
| PP1-ASS-C1140 |  | Roofing & cladding |  | 18d | 2026-06-12 A | 2026-07-06 A | PP1-ASS-C1130 FS-5d | 100% | 2026-05-11 | 2026-05-30 |  |  |  | Structural |
| PP1-ASS-C1160 |  | MEP installation |  | 40d | 2026-06-17 A | 2026-07-29 A | PP1-ASS-C1150 SS+10d, PP1-ASS-P1080 | 100% | 2026-06-02 | 2026-07-17 |  |  |  | MEP |
| PP1-ASS-C1170 |  | Finishes - flooring & painting |  | 33d | 2026-07-09 A | 2026-08-14 A | PP1-ASS-C1150, PP1-ASS-C1140 | 100% | 2026-06-01 | 2026-07-08 |  |  |  | Architecture |
| PP1-ASS-C1180 |  | Testing & commissioning |  | 11d | 2026-08-04 A | 2026-08-17 A | PP1-ASS-C1160, PP1-ASS-C1170 FF | 100% | 2026-07-18 | 2026-07-30 |  |  |  | MEP |
| PP1-ASS-C1190 |  | Building handover to client | milestone | 0d | 2026-08-19 A | 2026-08-19 A | PP1-ASS-C1180 | 100% | 2026-07-30 | 2026-07-30 |  |  |  | Milestone |

| ID | WBS | Activity | Type | Duration | Start | Finish | Predecessors | Complete | Remaining | Planned start | Planned finish | Total float | Free float | Calendar | Discipline |
| --- | --- | --- | --- | --- | --- | --- | --- | --- | --- | --- | --- | --- | --- | --- | --- |
|  | PP1.AGB | **Additive Grinding Building** |  |  | 2026-01-20 | 2027-02-22 |  |  |  |  |  |  |  |  |  |
|  | PP1.AGB.E | **Engineering** |  |  | 2026-01-27 | 2026-05-21 |  |  |  |  |  |  |  |  |  |
| PP1-AGB-E1010 |  | Design basis & architectural layout |  | 26d | 2026-01-27 A | 2026-03-03 A | MS-1000 FS+10d | 100% |  | 2026-01-19 | 2026-02-24 |  |  | Office 5-Day (Mon-Fri) | Architecture |
| PP1-AGB-E1020 |  | Structural design & IFC drawings |  | 42d | 2026-02-12 A | 2026-04-15 A | PP1-AGB-E1010 SS+5d | 100% |  | 2026-01-27 | 2026-03-26 |  |  | Office 5-Day (Mon-Fri) | Structural |
| PP1-AGB-E1030 |  | MEP design & drawings |  | 54d | 2026-03-11 A | 2026-05-21 A | PP1-AGB-E1010 | 100% |  | 2026-02-25 | 2026-05-13 |  |  | Office 5-Day (Mon-Fri) | MEP |
| PP1-AGB-E1040 |  | Drawing approval by client |  | 16d | 2026-04-24 A | 2026-05-21 A | PP1-AGB-E1020, PP1-AGB-E1030 FF | 100% |  | 2026-04-22 | 2026-05-13 |  |  | Office 5-Day (Mon-Fri) | Architecture |
|  | PP1.AGB.P | **Procurement** |  |  | 2026-04-21 | 2026-11-18 |  |  |  |  |  |  |  |  |  |
| PP1-AGB-P1050 |  | Structural steel - PO placement |  | 18d | 2026-04-21 A | 2026-05-13 A | PP1-AGB-E1020 | 100% |  | 2026-03-27 | 2026-04-17 |  |  |  | Structural |
| PP1-AGB-P1060 |  | Structural steel - fabrication & supply to site |  | 79d | 2026-05-19 A | 2026-08-27 A | PP1-AGB-P1050 | 100% |  | 2026-04-18 | 2026-07-18 |  |  |  | Structural |
| PP1-AGB-P1070 |  | MEP equipment - PO placement |  | 18d | 2026-05-29 A | 2026-06-18 A | PP1-AGB-E1030 | 100% |  | 2026-05-14 | 2026-06-03 |  |  |  | MEP |
| PP1-AGB-P1080 |  | MEP equipment - manufacturing & delivery |  | 99d | 2026-06-22 A | 2026-11-18 | PP1-AGB-P1070 | 34% | 65d | 2026-06-04 | 2026-09-28 | 86d | 0d |  | MEP |
|  | PP1.AGB.C | **Construction** |  |  | 2026-01-20 | 2027-02-22 |  |  |  |  |  |  |  |  |  |
| PP1-AGB-C1090 |  | Site mobilisation & survey |  | 8d | 2026-01-20 A | 2026-01-31 A | MS-1000 FS+10d | 100% |  | 2026-01-16 | 2026-01-24 |  |  |  | Civil |
| PP1-AGB-C1100 |  | Excavation |  | 25d | 2026-03-06 A | 2026-04-06 A | PP1-AGB-C1090, PP1-AGB-E1020 SS+10d | 100% |  | 2026-02-07 | 2026-03-09 |  |  |  | Civil |
| PP1-AGB-C1110 |  | PCC & foundation concreting |  | 36d | 2026-03-20 A | 2026-05-06 A | PP1-AGB-C1100 SS+7d | 100% |  | 2026-02-16 | 2026-03-30 |  |  |  | Civil |
| PP1-AGB-C1120 |  | Plinth beam & backfilling |  | 22d | 2026-05-11 A | 2026-06-03 A | PP1-AGB-C1110 | 100% |  | 2026-03-31 | 2026-04-25 |  |  |  | Civil |
| PP1-AGB-C1130 |  | Superstructure - RCC / steel erection |  | 82d | 2026-06-13 A | 2026-10-03 | PP1-AGB-C1120, PP1-AGB-P1060 SS+15d | 68% | 28d | 2026-05-06 | 2026-08-08 | 121d | 0d |  | Structural |
| PP1-AGB-C1150 |  | Masonry & plastering |  | 55d | 2026-07-11 A | 2026-09-24 | PP1-AGB-C1130 SS+20d | 64% | 21d | 2026-05-29 | 2026-07-31 | 141d | 33d |  | Civil |
| PP1-AGB-C1140 |  | Roofing & cladding |  | 31d | 2026-09-28 | 2026-11-04 | PP1-AGB-C1130 FS-5d |  |  |  |  | 131d | 0d |  | Structural |
| PP1-AGB-C1170 |  | Finishes - flooring & painting |  | 46d | 2026-11-05 | 2026-12-30 | PP1-AGB-C1150, PP1-AGB-C1140 |  |  |  |  | 131d | 45d |  | Architecture |
| PP1-AGB-C1160 |  | MEP installation |  | 63d | 2026-11-19 | 2027-02-02 | PP1-AGB-C1150 SS+10d, PP1-AGB-P1080 |  |  |  |  | 86d | 0d |  | MEP |
| PP1-AGB-C1180 |  | Testing & commissioning |  | 17d | 2027-02-03 | 2027-02-22 | PP1-AGB-C1160, PP1-AGB-C1170 FF |  |  |  |  | 86d | 0d |  | MEP |
| PP1-AGB-C1190 |  | Building handover to client | milestone | 0d | 2027-02-22 | 2027-02-22 | PP1-AGB-C1180 |  |  |  |  | 86d |  |  | Milestone |
|  | PP1.GPB | **Green Pelletizing Building** |  |  | 2026-01-29 | 2027-06-03 |  |  |  |  |  |  |  |  |  |
|  | PP1.GPB.E | **Engineering** |  |  | 2026-02-06 | 2026-07-09 |  |  |  |  |  |  |  |  |  |
| PP1-GPB-E1010 |  | Design basis & architectural layout |  | 30d | 2026-02-06 A | 2026-03-25 A | MS-1000 FS+20d | 100% |  | 2026-02-03 | 2026-03-17 |  |  | Office 5-Day (Mon-Fri) | Architecture |
| PP1-GPB-E1020 |  | Structural design & IFC drawings |  | 43d | 2026-02-17 A | 2026-04-24 A | PP1-GPB-E1010 SS+5d | 100% |  | 2026-02-10 | 2026-04-13 |  |  | Office 5-Day (Mon-Fri) | Structural |
| PP1-GPB-E1030 |  | MEP design & drawings |  | 60d | 2026-03-31 A | 2026-07-09 A | PP1-GPB-E1010 | 100% |  | 2026-03-18 | 2026-06-10 |  |  | Office 5-Day (Mon-Fri) | MEP |
| PP1-GPB-E1040 |  | Drawing approval by client |  | 21d | 2026-05-18 A | 2026-07-09 A | PP1-GPB-E1020, PP1-GPB-E1030 FF | 100% |  | 2026-05-13 | 2026-06-10 |  |  | Office 5-Day (Mon-Fri) | Architecture |

| ID | WBS | Activity | Type | Duration | Start | Finish | Predecessors | Complete | Remaining | Planned start | Planned finish | Total float | Free float | Calendar | Discipline |
| --- | --- | --- | --- | --- | --- | --- | --- | --- | --- | --- | --- | --- | --- | --- | --- |
|  | PP1.GPB.P | **Procurement** |  |  | 2026-05-01 | 2027-01-18 |  |  |  |  |  |  |  |  |  |
| PP1-GPB-P1050 |  | Structural steel - PO placement |  | 19d | 2026-05-01 A | 2026-05-26 A | PP1-GPB-E1020 | 100% |  | 2026-04-14 | 2026-05-05 |  |  |  | Structural |
| PP1-GPB-P1060 |  | Structural steel - fabrication & supply to site |  | 83d | 2026-06-01 A | 2026-10-05 | PP1-GPB-P1050 | 65% | 29d | 2026-05-06 | 2026-08-10 | 64d |  |  | Structural |
| PP1-GPB-P1070 |  | MEP equipment - PO placement |  | 26d | 2026-07-15 A | 2026-08-12 A | PP1-GPB-E1030 | 100% |  | 2026-06-11 | 2026-07-10 |  |  |  | MEP |
| PP1-GPB-P1080 |  | MEP equipment - manufacturing & delivery |  | 118d | 2026-08-14 A | 2027-01-18 | PP1-GPB-P1070 | 2% | 116d | 2026-07-11 | 2026-11-30 | 0d |  |  | MEP |
|  | PP1.GPB.C | **Construction** |  |  | 2026-01-29 | 2027-06-03 |  |  |  |  |  |  |  |  |  |
| PP1-GPB-C1090 |  | Site mobilisation & survey |  | 11d | 2026-01-29 A | 2026-02-10 A | MS-1000 FS+20d | 100% |  |  |  |  |  |  | Civil |
| PP1-GPB-C1100 |  | Excavation |  | 26d | 2026-03-03 A | 2026-04-02 A | PP1-GPB-C1090, PP1-GPB-E1020 SS+10d | 100% |  | 2026-02-21 | 2026-03-24 |  |  |  | Civil |
| PP1-GPB-C1110 |  | PCC & foundation concreting |  | 52d | 2026-03-14 A | 2026-05-18 A | PP1-GPB-C1100 SS+7d | 100% |  | 2026-03-02 | 2026-05-02 |  |  |  | Civil |
| PP1-GPB-C1120 |  | Plinth beam & backfilling |  | 29d | 2026-05-20 A | 2026-06-27 A | PP1-GPB-C1110 | 100% |  | 2026-05-04 | 2026-06-05 |  |  |  | Civil |
| PP1-GPB-C1130 |  | Superstructure - RCC / steel erection |  | 94d | 2026-06-29 A | 2026-10-30 | PP1-GPB-C1120, PP1-GPB-P1060 SS+15d | 58% | 50d | 2026-06-06 | 2026-09-24 | 79d | 0d |  | Structural |
| PP1-GPB-C1150 |  | Masonry & plastering |  | 59d | 2026-07-25 A | 2026-10-19 | PP1-GPB-C1130 SS+20d | 43% | 41d | 2026-06-30 | 2026-09-07 | 106d | 50d |  | Civil |
| PP1-GPB-C1140 |  | Roofing & cladding |  | 46d | 2026-10-26 | 2026-12-18 | PP1-GPB-C1130 FS-5d |  |  |  |  | 79d | 0d |  | Structural |
| PP1-GPB-C1170 |  | Finishes - flooring & painting |  | 61d | 2026-12-19 | 2027-03-02 | PP1-GPB-C1150, PP1-GPB-C1140 |  |  |  |  | 79d |  |  | Architecture |
| PP1-GPB-C1160 |  | MEP installation |  | 89d | 2027-01-19 | 2027-05-04 | PP1-GPB-C1150 SS+10d, PP1-GPB-P1080 |  |  |  |  | 0d |  |  | MEP |
| PP1-GPB-C1180 |  | Testing & commissioning |  | 26d | 2027-05-05 | 2027-06-03 | PP1-GPB-C1160, PP1-GPB-C1170 FF |  |  |  |  | 0d |  |  | MEP |
| PP1-GPB-C1190 |  | Building handover to client | milestone | 0d | 2027-06-03 | 2027-06-03 | PP1-GPB-C1180 |  |  |  |  | 0d |  |  | Milestone |
|  | PP1.IFB | **Induration Furnace Building** |  |  | 2026-03-02 | 2027-04-23 |  |  |  |  |  |  |  |  |  |
|  | PP1.IFB.E | **Engineering** |  |  | 2026-03-16 | 2026-08-05 |  |  |  |  |  |  |  |  |  |
| PP1-IFB-E1010 |  | Design basis & architectural layout |  | 30d | 2026-03-16 A | 2026-04-28 A | MS-1000 FS+40d | 100% |  | 2026-03-03 | 2026-04-15 |  |  | Office 5-Day (Mon-Fri) | Architecture |
| PP1-IFB-E1020 |  | Structural design & IFC drawings |  | 39d | 2026-04-01 A | 2026-05-25 A | PP1-IFB-E1010 SS+5d | 100% |  | 2026-03-11 | 2026-05-05 |  |  | Office 5-Day (Mon-Fri) | Structural |
| PP1-IFB-E1030 |  | MEP design & drawings |  | 52d | 2026-05-11 A | 2026-08-05 A | PP1-IFB-E1010 | 100% |  | 2026-04-16 | 2026-06-26 |  |  | Office 5-Day (Mon-Fri) | MEP |
| PP1-IFB-E1040 |  | Drawing approval by client |  | 18d | 2026-06-17 A | 2026-08-05 A | PP1-IFB-E1020, PP1-IFB-E1030 FF | 100% |  | 2026-06-03 | 2026-06-26 |  |  | Office 5-Day (Mon-Fri) | Architecture |
|  | PP1.IFB.P | **Procurement** |  |  | 2026-06-04 | 2027-01-04 |  |  |  |  |  |  |  |  |  |
| PP1-IFB-P1050 |  | Structural steel - PO placement |  | 19d | 2026-06-04 A | 2026-06-25 A | PP1-IFB-E1020 | 100% |  | 2026-05-06 | 2026-05-27 |  |  |  | Structural |
| PP1-IFB-P1060 |  | Structural steel - fabrication & supply to site |  | 88d | 2026-07-03 A | 2026-11-17 | PP1-IFB-P1050 | 27% | 64d | 2026-05-28 | 2026-09-08 | 41d |  |  | Structural |
| PP1-IFB-P1070 |  | MEP equipment - PO placement |  | 23d | 2026-08-14 A | 2026-09-12 | PP1-IFB-E1030 | 52% | 11d | 2026-06-27 | 2026-07-23 | 35d | 0d |  | MEP |
| PP1-IFB-P1080 |  | MEP equipment - manufacturing & delivery |  | 93d | 2026-09-14 | 2027-01-04 | PP1-IFB-P1070 |  |  |  |  | 35d | 0d |  | MEP |

| ID | WBS | Activity | Type | Duration | Start | Finish | Predecessors | Complete | Remaining | Planned start | Planned finish | Total float | Free float | Calendar | Discipline |
| --- | --- | --- | --- | --- | --- | --- | --- | --- | --- | --- | --- | --- | --- | --- | --- |
|  | PP1.IFB.C | **Construction** |  |  | 2026-03-02 | 2027-04-23 |  |  |  |  |  |  |  |  |  |
| PP1-IFB-C1090 |  | Site mobilisation & survey |  | 8d | 2026-03-02 A | 2026-03-12 A | MS-1000 FS+40d | 100% |  | 2026-02-21 | 2026-03-02 |  |  |  | Civil |
| PP1-IFB-C1100 |  | Excavation |  | 27d | 2026-04-27 A | 2026-05-26 A | PP1-IFB-C1090, PP1-IFB-E1020 SS+10d | 100% |  | 2026-03-23 | 2026-04-23 |  |  |  | Civil |
| PP1-IFB-C1110 |  | PCC & foundation concreting |  | 43d | 2026-05-12 A | 2026-06-27 A | PP1-IFB-C1100 SS+7d | 100% |  | 2026-03-31 | 2026-05-20 |  |  |  | Civil |
| PP1-IFB-C1120 |  | Plinth beam & backfilling |  | 26d | 2026-07-08 A | 2026-08-04 A | PP1-IFB-C1110 | 100% |  | 2026-05-21 | 2026-06-19 |  |  |  | Civil |
| PP1-IFB-C1130 |  | Superstructure - RCC / steel erection |  | 79d | 2026-08-17 A | 2026-12-11 | PP1-IFB-C1120, PP1-IFB-P1060 SS+15d | 14% | 85d | 2026-06-20 | 2026-09-21 | 56d | 0d |  | Structural |
| PP1-IFB-C1160 |  | MEP installation |  | 73d | 2026-08-26 A | 2027-03-30 | PP1-IFB-C1150 SS+10d, PP1-IFB-P1080 | 5% | 71d | 2026-11-14 | 2027-02-09 | 35d | 0d |  | MEP |
| PP1-IFB-C1150 |  | Masonry & plastering |  | 48d | 2026-09-09 | 2026-11-05 | PP1-IFB-C1130 SS+20d |  |  |  |  | 116d | 60d |  | Civil |
| PP1-IFB-C1140 |  | Roofing & cladding |  | 35d | 2026-12-07 | 2027-01-16 | PP1-IFB-C1130 FS-5d |  |  |  |  | 56d | 0d |  | Structural |
| PP1-IFB-C1170 |  | Finishes - flooring & painting |  | 60d | 2027-01-18 | 2027-03-30 | PP1-IFB-C1150, PP1-IFB-C1140 |  |  |  |  | 56d | 21d |  | Architecture |
| PP1-IFB-C1180 |  | Testing & commissioning |  | 21d | 2027-03-31 | 2027-04-23 | PP1-IFB-C1160, PP1-IFB-C1170 FF |  |  |  |  | 35d | 0d |  | MEP |
| PP1-IFB-C1190 |  | Building handover to client | milestone | 0d | 2027-04-23 | 2027-04-23 | PP1-IFB-C1180 |  |  |  |  | 35d |  |  | Milestone |
|  | PP2 | **Pellet Plant-2** |  |  | 2026-03-18 | 2027-05-20 |  |  |  |  |  |  |  |  |  |
|  | PP2.ASS | **Additive Storage Shed** |  |  | 2026-03-18 | 2026-12-02 |  |  |  |  |  |  |  |  |  |
|  | PP2.ASS.E | **Engineering** |  |  | 2026-04-02 | 2026-06-10 |  |  |  |  |  |  |  |  |  |
| PP2-ASS-E1010 |  | Design basis & architectural layout |  | 17d | 2026-04-02 A | 2026-04-30 A | MS-1000 FS+60d | 100% |  | 2026-04-01 | 2026-04-24 |  |  | Office 5-Day (Mon-Fri) | Architecture |
| PP2-ASS-E1020 |  | Structural design & IFC drawings |  | 25d | 2026-04-16 A | 2026-05-27 A | PP2-ASS-E1010 SS+5d | 100% |  | 2026-04-09 | 2026-05-13 |  |  | Office 5-Day (Mon-Fri) | Structural |
| PP2-ASS-E1030 |  | MEP design & drawings |  | 27d | 2026-05-01 A | 2026-06-10 A | PP2-ASS-E1010 | 100% |  | 2026-04-27 | 2026-06-02 |  |  | Office 5-Day (Mon-Fri) | MEP |
| PP2-ASS-E1040 |  | Drawing approval by client |  | 9d | 2026-05-29 A | 2026-06-10 A | PP2-ASS-E1020, PP2-ASS-E1030 FF | 100% |  | 2026-05-21 | 2026-06-02 |  |  | Office 5-Day (Mon-Fri) | Architecture |
|  | PP2.ASS.P | **Procurement** |  |  | 2026-05-28 | 2026-09-28 |  |  |  |  |  |  |  |  |  |
| PP2-ASS-P1050 |  | Structural steel - PO placement |  | 10d | 2026-05-28 A | 2026-06-09 A | PP2-ASS-E1020 | 100% |  | 2026-05-14 | 2026-05-25 |  |  |  | Structural |
| PP2-ASS-P1060 |  | Structural steel - fabrication & supply to site |  | 43d | 2026-06-11 A | 2026-08-05 A | PP2-ASS-P1050 | 100% |  | 2026-05-26 | 2026-07-14 |  |  |  | Structural |
| PP2-ASS-P1070 |  | MEP equipment - PO placement |  | 12d | 2026-06-15 A | 2026-06-27 A | PP2-ASS-E1030 | 100% |  | 2026-06-03 | 2026-06-16 |  |  |  | MEP |
| PP2-ASS-P1080 |  | MEP equipment - manufacturing & delivery |  | 67d | 2026-07-02 A | 2026-09-28 | PP2-ASS-P1070 | 64% | 24d | 2026-06-17 | 2026-09-03 | 154d | 0d |  | MEP |

| ID | WBS | Activity | Type | Duration | Start | Finish | Predecessors | Complete | Remaining | Planned start | Planned finish | Total float | Free float | Calendar | Discipline |
| --- | --- | --- | --- | --- | --- | --- | --- | --- | --- | --- | --- | --- | --- | --- | --- |
|  | PP2.ASS.C | **Construction** |  |  | 2026-03-18 | 2026-12-02 |  |  |  |  |  |  |  |  |  |
| PP2-ASS-C1090 |  | Site mobilisation & survey |  | 5d | 2026-03-18 A | 2026-03-23 A | MS-1000 FS+60d | 100% |  |  |  |  |  |  | Civil |
| PP2-ASS-C1100 |  | Excavation |  | 17d | 2026-04-29 A | 2026-05-20 A | PP2-ASS-C1090, PP2-ASS-E1020 SS+10d | 100% |  | 2026-04-21 | 2026-05-09 |  |  |  | Civil |
| PP2-ASS-C1110 |  | PCC & foundation concreting |  | 22d | 2026-05-09 A | 2026-06-03 A | PP2-ASS-C1100 SS+7d | 100% |  | 2026-04-29 | 2026-05-23 |  |  |  | Civil |
| PP2-ASS-C1120 |  | Plinth beam & backfilling |  | 15d | 2026-06-04 A | 2026-06-22 A | PP2-ASS-C1110 | 100% |  | 2026-05-25 | 2026-06-10 |  |  |  | Civil |
| PP2-ASS-C1130 |  | Superstructure - RCC / steel erection |  | 50d | 2026-07-04 A | 2026-09-03 | PP2-ASS-C1120, PP2-ASS-P1060 SS+15d | 94% | 3d | 2026-06-12 | 2026-08-08 | 148d | 2d |  | Structural |
| PP2-ASS-C1150 |  | Masonry & plastering |  | 33d | 2026-07-31 A | 2026-09-17 | PP2-ASS-C1130 SS+20d | 61% | 15d | 2026-07-06 | 2026-08-12 | 168d | 5d |  | Civil |
| PP2-ASS-C1140 |  | Roofing & cladding |  | 20d | 2026-09-01 | 2026-09-23 | PP2-ASS-C1130 FS-5d |  |  |  |  | 185d | 0d |  | Structural |
| PP2-ASS-C1170 |  | Finishes - flooring & painting |  | 26d | 2026-09-24 | 2026-10-26 | PP2-ASS-C1150, PP2-ASS-C1140 |  |  |  |  | 185d | 31d |  | Architecture |
| PP2-ASS-C1160 |  | MEP installation |  | 42d | 2026-09-29 | 2026-11-19 | PP2-ASS-C1150 SS+10d, PP2-ASS-P1080 |  |  |  |  | 154d | 0d |  | MEP |
| PP2-ASS-C1180 |  | Testing & commissioning |  | 11d | 2026-11-20 | 2026-12-02 | PP2-ASS-C1160, PP2-ASS-C1170 FF |  |  |  |  | 154d | 0d |  | MEP |
| PP2-ASS-C1190 |  | Building handover to client | milestone | 0d | 2026-12-02 | 2026-12-02 | PP2-ASS-C1180 |  |  |  |  | 154d |  |  | Milestone |
|  | PP2.GPB | **Green Pelletizing Building** |  |  | 2026-04-17 | 2027-05-20 |  |  |  |  |  |  |  |  |  |
|  | PP2.GPB.E | **Engineering** |  |  | 2026-05-07 | 2026-08-31 |  |  |  |  |  |  |  |  |  |
| PP2-GPB-E1010 |  | Design basis & architectural layout |  | 26d | 2026-05-07 A | 2026-06-11 A | MS-1000 FS+80d | 100% |  | 2026-04-30 | 2026-06-04 |  |  | Office 5-Day (Mon-Fri) | Architecture |
| PP2-GPB-E1020 |  | Structural design & IFC drawings |  | 39d | 2026-05-20 A | 2026-07-09 A | PP2-GPB-E1010 SS+5d | 100% |  | 2026-05-07 | 2026-06-30 |  |  | Office 5-Day (Mon-Fri) | Structural |
| PP2-GPB-E1030 |  | MEP design & drawings |  | 53d | 2026-06-19 A | 2026-08-31 A | PP2-GPB-E1010 | 100% |  | 2026-06-05 | 2026-08-18 |  |  | Office 5-Day (Mon-Fri) | MEP |
| PP2-GPB-E1040 |  | Drawing approval by client |  | 17d | 2026-07-31 A | 2026-08-31 A | PP2-GPB-E1020, PP2-GPB-E1030 FF | 100% |  | 2026-07-27 | 2026-08-18 |  |  | Office 5-Day (Mon-Fri) | Architecture |
|  | PP2.GPB.P | **Procurement** |  |  | 2026-07-13 | 2027-01-21 |  |  |  |  |  |  |  |  |  |
| PP2-GPB-P1050 |  | Structural steel - PO placement |  | 17d | 2026-07-13 A | 2026-08-04 A | PP2-GPB-E1020 | 100% |  | 2026-07-01 | 2026-07-20 |  |  |  | Structural |
| PP2-GPB-P1060 |  | Structural steel - fabrication & supply to site |  | 72d | 2026-08-08 A | 2026-11-18 | PP2-GPB-P1050 | 10% | 65d | 2026-07-21 | 2026-10-14 | 53d |  |  | Structural |
| PP2-GPB-P1070 |  | MEP equipment - PO placement |  | 19d | 2026-09-01 | 2026-09-22 | PP2-GPB-E1030 |  |  |  |  | 12d | 0d |  | MEP |
| PP2-GPB-P1080 |  | MEP equipment - manufacturing & delivery |  | 100d | 2026-09-23 | 2027-01-21 | PP2-GPB-P1070 |  |  |  |  | 12d | 0d |  | MEP |
|  | PP2.GPB.C | **Construction** |  |  | 2026-04-17 | 2027-05-20 |  |  |  |  |  |  |  |  |  |
| PP2-GPB-C1090 |  | Site mobilisation & survey |  | 10d | 2026-04-17 A | 2026-04-30 A | MS-1000 FS+80d | 100% |  | 2026-04-11 | 2026-04-22 |  |  |  | Civil |
| PP2-GPB-C1100 |  | Excavation |  | 27d | 2026-06-05 A | 2026-07-07 A | PP2-GPB-C1090, PP2-GPB-E1020 SS+10d | 100% |  | 2026-05-19 | 2026-06-18 |  |  |  | Civil |
| PP2-GPB-C1110 |  | PCC & foundation concreting |  | 50d | 2026-06-17 A | 2026-08-24 A | PP2-GPB-C1100 SS+7d | 100% |  | 2026-05-27 | 2026-07-23 |  |  |  | Civil |
| PP2-GPB-C1120 |  | Plinth beam & backfilling |  | 26d | 2026-08-28 A | 2026-10-01 | PP2-GPB-C1110 | 10% | 27d | 2026-07-24 | 2026-08-24 | 41d | 0d |  | Civil |
| PP2-GPB-C1130 |  | Superstructure - RCC / steel erection |  | 77d | 2026-10-03 | 2027-01-04 | PP2-GPB-C1120, PP2-GPB-P1060 SS+15d |  |  |  |  | 41d | 0d |  | Structural |
| PP2-GPB-C1150 |  | Masonry & plastering |  | 60d | 2026-10-28 | 2027-01-07 | PP2-GPB-C1130 SS+20d |  |  |  |  | 70d | 29d |  | Civil |
| PP2-GPB-C1140 |  | Roofing & cladding |  | 37d | 2026-12-30 | 2027-02-11 | PP2-GPB-C1130 FS-5d |  |  |  |  | 41d | 0d |  | Structural |
| PP2-GPB-C1160 |  | MEP installation |  | 77d | 2027-01-22 | 2027-04-23 | PP2-GPB-C1150 SS+10d, PP2-GPB-P1080 |  |  |  |  | 12d | 0d |  | MEP |
| PP2-GPB-C1170 |  | Finishes - flooring & painting |  | 54d | 2027-02-12 | 2027-04-16 | PP2-GPB-C1150, PP2-GPB-C1140 |  |  |  |  | 41d | 29d |  | Architecture |
| PP2-GPB-C1180 |  | Testing & commissioning |  | 23d | 2027-04-24 | 2027-05-20 | PP2-GPB-C1160, PP2-GPB-C1170 FF |  |  |  |  | 12d | 0d |  | MEP |
| PP2-GPB-C1190 |  | Building handover to client | milestone | 0d | 2027-05-20 | 2027-05-20 | PP2-GPB-C1180 |  |  |  |  | 12d |  |  | Milestone |

| ID | WBS | Activity | Type | Duration | Start | Finish | Predecessors | Complete | Remaining | Planned start | Planned finish | Total float | Free float | Calendar | Discipline |
| --- | --- | --- | --- | --- | --- | --- | --- | --- | --- | --- | --- | --- | --- | --- | --- |
|  | PP2.SCH | **Screen House** |  |  | 2026-05-11 | 2027-03-20 |  |  |  |  |  |  |  |  |  |
|  | PP2.SCH.E | **Engineering** |  |  | 2026-06-01 | 2026-09-02 |  |  |  |  |  |  |  |  |  |
| PP2-SCH-E1010 |  | Design basis & architectural layout |  | 21d | 2026-06-01 A | 2026-06-26 A | MS-1000 FS+100d | 100% |  | 2026-05-28 | 2026-06-25 |  |  | Office 5-Day (Mon-Fri) | Architecture |
| PP2-SCH-E1020 |  | Structural design & IFC drawings |  | 35d | 2026-06-08 A | 2026-07-28 A | PP2-SCH-E1010 SS+5d | 100% |  | 2026-06-04 | 2026-07-22 |  |  | Office 5-Day (Mon-Fri) | Structural |
| PP2-SCH-E1030 |  | MEP design & drawings |  | 40d | 2026-06-30 A | 2026-09-02 | PP2-SCH-E1010 | 95% | 2d | 2026-06-26 | 2026-08-20 | 52d | 0d | Office 5-Day (Mon-Fri) | MEP |
| PP2-SCH-E1040 |  | Drawing approval by client |  | 15d | 2026-07-31 A | 2026-09-02 | PP2-SCH-E1020, PP2-SCH-E1030 FF | 93% | 1d | 2026-07-31 | 2026-08-20 | 190d |  | Office 5-Day (Mon-Fri) | Architecture |
|  | PP2.SCH.P | **Procurement** |  |  | 2026-08-01 | 2026-12-26 |  |  |  |  |  |  |  |  |  |
| PP2-SCH-P1050 |  | Structural steel - PO placement |  | 15d | 2026-08-01 A | 2026-08-22 A | PP2-SCH-E1020 | 100% |  | 2026-07-23 | 2026-08-08 |  |  |  | Structural |
| PP2-SCH-P1060 |  | Structural steel - fabrication & supply to site |  | 67d | 2026-08-28 A | 2026-12-04 | PP2-SCH-P1050 |  | 79d | 2026-08-10 | 2026-10-29 | 99d |  |  | Structural |
| PP2-SCH-P1070 |  | MEP equipment - PO placement |  | 18d | 2026-09-03 | 2026-09-23 | PP2-SCH-E1030 |  |  |  |  | 63d | 0d |  | MEP |
| PP2-SCH-P1080 |  | MEP equipment - manufacturing & delivery |  | 77d | 2026-09-24 | 2026-12-26 | PP2-SCH-P1070 |  |  |  |  | 63d | 0d |  | MEP |
|  | PP2.SCH.C | **Construction** |  |  | 2026-05-11 | 2027-03-20 |  |  |  |  |  |  |  |  |  |
| PP2-SCH-C1090 |  | Site mobilisation & survey |  | 7d | 2026-05-11 A | 2026-05-20 A | MS-1000 FS+100d | 100% |  | 2026-05-05 | 2026-05-12 |  |  |  | Civil |
| PP2-SCH-C1100 |  | Excavation |  | 20d | 2026-06-19 A | 2026-07-11 A | PP2-SCH-C1090, PP2-SCH-E1020 SS+10d | 100% |  | 2026-06-16 | 2026-07-08 |  |  |  | Civil |
| PP2-SCH-C1110 |  | PCC & foundation concreting |  | 30d | 2026-07-01 A | 2026-08-11 A | PP2-SCH-C1100 SS+7d | 100% |  | 2026-06-24 | 2026-07-28 |  |  |  | Civil |
| PP2-SCH-C1120 |  | Plinth beam & backfilling |  | 21d | 2026-08-13 A | 2026-09-10 | PP2-SCH-C1110 | 59% | 9d | 2026-07-29 | 2026-08-22 | 105d | 3d |  | Civil |
| PP2-SCH-C1130 |  | Superstructure - RCC / steel erection |  | 52d | 2026-09-15 | 2026-11-17 | PP2-SCH-C1120, PP2-SCH-P1060 SS+15d |  |  |  |  | 102d | 0d |  | Structural |
| PP2-SCH-C1150 |  | Masonry & plastering |  | 39d | 2026-10-09 | 2026-11-25 | PP2-SCH-C1130 SS+20d |  |  |  |  | 117d | 15d |  | Civil |
| PP2-SCH-C1140 |  | Roofing & cladding |  | 27d | 2026-11-12 | 2026-12-12 | PP2-SCH-C1130 FS-5d |  |  |  |  | 102d | 0d |  | Structural |
| PP2-SCH-C1170 |  | Finishes - flooring & painting |  | 43d | 2026-12-14 | 2027-02-03 | PP2-SCH-C1150, PP2-SCH-C1140 |  |  |  |  | 102d | 39d |  | Architecture |
| PP2-SCH-C1160 |  | MEP installation |  | 55d | 2026-12-28 | 2027-03-02 | PP2-SCH-C1150 SS+10d, PP2-SCH-P1080 |  |  |  |  | 63d | 0d |  | MEP |
| PP2-SCH-C1180 |  | Testing & commissioning |  | 16d | 2027-03-03 | 2027-03-20 | PP2-SCH-C1160, PP2-SCH-C1170 FF |  |  |  |  | 63d | 0d |  | MEP |
| PP2-SCH-C1190 |  | Building handover to client | milestone | 0d | 2027-03-20 | 2027-03-20 | PP2-SCH-C1180 |  |  |  |  | 63d |  |  | Milestone |
|  | FLT | **Filtration Plant** |  |  | 2026-02-16 | 2027-03-01 |  |  |  |  |  |  |  |  |  |
|  | FLT.FLB | **Filtration Building** |  |  | 2026-02-16 | 2027-03-01 |  |  |  |  |  |  |  |  |  |
|  | FLT.FLB.E | **Engineering** |  |  | 2026-02-17 | 2026-06-11 |  |  |  |  |  |  |  |  |  |
| FLT-FLB-E1010 |  | Design basis & architectural layout |  | 24d | 2026-02-17 A | 2026-03-20 A | MS-1000 FS+30d | 100% |  | 2026-02-17 | 2026-03-23 |  |  | Office 5-Day (Mon-Fri) | Architecture |
| FLT-FLB-E1020 |  | Structural design & IFC drawings |  | 39d | 2026-02-24 A | 2026-04-30 A | FLT-FLB-E1010 SS+5d | 100% |  | 2026-02-24 | 2026-04-21 |  |  | Office 5-Day (Mon-Fri) | Structural |
| FLT-FLB-E1030 |  | MEP design & drawings |  | 53d | 2026-03-27 A | 2026-06-04 A | FLT-FLB-E1010 | 100% |  | 2026-03-24 | 2026-06-05 |  |  | Office 5-Day (Mon-Fri) | MEP |
| FLT-FLB-E1040 |  | Drawing approval by client |  | 16d | 2026-05-18 A | 2026-06-11 A | FLT-FLB-E1020, FLT-FLB-E1030 FF | 100% |  | 2026-05-15 | 2026-06-05 |  |  | Office 5-Day (Mon-Fri) | Architecture |

| ID | WBS | Activity | Type | Duration | Start | Finish | Predecessors | Complete | Remaining | Planned start | Planned finish | Total float | Free float | Calendar | Discipline |
| --- | --- | --- | --- | --- | --- | --- | --- | --- | --- | --- | --- | --- | --- | --- | --- |
|  | FLT.FLB.P | **Procurement** |  |  | 2026-05-05 | 2026-11-16 |  |  |  |  |  |  |  |  |  |
| FLT-FLB-P1050 |  | Structural steel - PO placement |  | 18d | 2026-05-05 A | 2026-05-26 A | FLT-FLB-E1020 | 100% |  | 2026-04-22 | 2026-05-12 |  |  |  | Structural |
| FLT-FLB-P1060 |  | Structural steel - fabrication & supply to site |  | 66d | 2026-05-27 A | 2026-08-20 A | FLT-FLB-P1050 | 100% |  | 2026-05-13 | 2026-07-28 |  |  |  | Structural |
| FLT-FLB-P1070 |  | MEP equipment - PO placement |  | 20d | 2026-06-06 A | 2026-06-27 A | FLT-FLB-E1030 | 100% |  | 2026-06-06 | 2026-06-29 |  |  |  | MEP |
| FLT-FLB-P1080 |  | MEP equipment - manufacturing & delivery |  | 89d | 2026-07-04 A | 2026-11-16 | FLT-FLB-P1070 | 29% | 63d | 2026-06-30 | 2026-10-13 | 80d | 0d |  | MEP |
|  | FLT.FLB.C | **Construction** |  |  | 2026-02-16 | 2027-03-01 |  |  |  |  |  |  |  |  |  |
| FLT-FLB-C1090 |  | Site mobilisation & survey |  | 8d | 2026-02-16 A | 2026-02-26 A | MS-1000 FS+30d | 100% |  | 2026-02-10 | 2026-02-18 |  |  |  | Civil |
| FLT-FLB-C1100 |  | Excavation |  | 25d | 2026-03-10 A | 2026-04-14 A | FLT-FLB-C1090, FLT-FLB-E1020 SS+10d | 100% |  | 2026-03-09 | 2026-04-07 |  |  |  | Civil |
| FLT-FLB-C1110 |  | PCC & foundation concreting |  | 39d | 2026-03-23 A | 2026-05-14 A | FLT-FLB-C1100 SS+7d | 100% |  | 2026-03-17 | 2026-05-01 |  |  |  | Civil |
| FLT-FLB-C1120 |  | Plinth beam & backfilling |  | 26d | 2026-05-20 A | 2026-06-22 A | FLT-FLB-C1110 | 100% |  | 2026-05-02 | 2026-06-01 |  |  |  | Civil |
| FLT-FLB-C1130 |  | Superstructure - RCC / steel erection |  | 67d | 2026-06-25 A | 2026-10-01 | FLT-FLB-C1120, FLT-FLB-P1060 SS+15d | 66% | 27d | 2026-06-02 | 2026-08-19 | 113d | 0d |  | Structural |
| FLT-FLB-C1150 |  | Masonry & plastering |  | 46d | 2026-07-22 A | 2026-09-18 | FLT-FLB-C1130 SS+20d | 73% | 16d | 2026-06-25 | 2026-08-18 | 133d | 40d |  | Civil |
| FLT-FLB-C1160 |  | MEP installation |  | 69d | 2026-08-26 A | 2027-02-04 | FLT-FLB-C1150 SS+10d, FLT-FLB-P1080 | 5% | 67d | 2026-10-14 | 2027-01-05 | 80d | 0d |  | MEP |
| FLT-FLB-C1140 |  | Roofing & cladding |  | 34d | 2026-09-26 | 2026-11-06 | FLT-FLB-C1130 FS-5d |  |  |  |  | 125d | 0d |  | Structural |
| FLT-FLB-C1170 |  | Finishes - flooring & painting |  | 50d | 2026-11-07 | 2027-01-06 | FLT-FLB-C1150, FLT-FLB-C1140 |  |  |  |  | 125d | 45d |  | Architecture |
| FLT-FLB-C1180 |  | Testing & commissioning |  | 21d | 2027-02-05 | 2027-03-01 | FLT-FLB-C1160, FLT-FLB-C1170 FF |  |  |  |  | 80d | 0d |  | MEP |
| FLT-FLB-C1190 |  | Building handover to client | milestone | 0d | 2027-03-01 | 2027-03-01 | FLT-FLB-C1180 |  |  |  |  | 80d |  |  | Milestone |
|  | FLT.RFB | **Return Fines Building** |  |  | 2026-04-04 | 2027-01-20 |  |  |  |  |  |  |  |  |  |
|  | FLT.RFB.E | **Engineering** |  |  | 2026-04-16 | 2026-07-10 |  |  |  |  |  |  |  |  |  |
| FLT-RFB-E1010 |  | Design basis & architectural layout |  | 19d | 2026-04-16 A | 2026-05-13 A | MS-1000 FS+70d | 100% |  | 2026-04-16 | 2026-05-12 |  |  | Office 5-Day (Mon-Fri) | Architecture |
| FLT-RFB-E1020 |  | Structural design & IFC drawings |  | 34d | 2026-04-23 A | 2026-06-10 A | FLT-RFB-E1010 SS+5d | 100% |  | 2026-04-23 | 2026-06-09 |  |  | Office 5-Day (Mon-Fri) | Structural |
| FLT-RFB-E1030 |  | MEP design & drawings |  | 36d | 2026-05-19 A | 2026-07-10 A | FLT-RFB-E1010 | 100% |  | 2026-05-13 | 2026-07-01 |  |  | Office 5-Day (Mon-Fri) | MEP |
| FLT-RFB-E1040 |  | Drawing approval by client |  | 11d | 2026-06-22 A | 2026-07-10 A | FLT-RFB-E1020, FLT-RFB-E1030 FF | 100% |  | 2026-06-17 | 2026-07-01 |  |  | Office 5-Day (Mon-Fri) | Architecture |
|  | FLT.RFB.P | **Procurement** |  |  | 2026-06-12 | 2026-11-02 |  |  |  |  |  |  |  |  |  |
| FLT-RFB-P1050 |  | Structural steel - PO placement |  | 11d | 2026-06-12 A | 2026-06-24 A | FLT-RFB-E1020 | 100% |  | 2026-06-10 | 2026-06-22 |  |  |  | Structural |
| FLT-RFB-P1060 |  | Structural steel - fabrication & supply to site |  | 60d | 2026-06-30 A | 2026-10-03 | FLT-RFB-P1050 | 53% | 28d | 2026-06-23 | 2026-09-01 | 120d |  |  | Structural |
| FLT-RFB-P1070 |  | MEP equipment - PO placement |  | 12d | 2026-07-11 A | 2026-07-24 A | FLT-RFB-E1030 | 100% |  | 2026-07-02 | 2026-07-15 |  |  |  | MEP |
| FLT-RFB-P1080 |  | MEP equipment - manufacturing & delivery |  | 62d | 2026-07-29 A | 2026-11-02 | FLT-RFB-P1070 | 16% | 52d | 2026-07-16 | 2026-09-26 | 113d | 0d |  | MEP |

| ID | WBS | Activity | Type | Duration | Start | Finish | Predecessors | Complete | Remaining | Planned start | Planned finish | Total float | Free float | Discipline |
| --- | --- | --- | --- | --- | --- | --- | --- | --- | --- | --- | --- | --- | --- | --- |
|  | FLT.RFB.C | **Construction** |  |  | 2026-04-04 | 2027-01-20 |  |  |  |  |  |  |  |  |
| FLT-RFB-C1090 |  | Site mobilisation & survey |  | 7d | 2026-04-04 A | 2026-04-11 A | MS-1000 FS+70d | 100% |  | 2026-03-30 | 2026-04-07 |  |  | Civil |
| FLT-RFB-C1100 |  | Excavation |  | 17d | 2026-05-05 A | 2026-05-27 A | FLT-RFB-C1090, FLT-RFB-E1020 SS+10d | 100% |  | 2026-05-05 | 2026-05-23 |  |  | Civil |
| FLT-RFB-C1110 |  | PCC & foundation concreting |  | 27d | 2026-05-14 A | 2026-06-13 A | FLT-RFB-C1100 SS+7d | 100% |  | 2026-05-13 | 2026-06-12 |  |  | Civil |
| FLT-RFB-C1120 |  | Plinth beam & backfilling |  | 20d | 2026-06-17 A | 2026-07-08 A | FLT-RFB-C1110 | 100% |  | 2026-06-13 | 2026-07-06 |  |  | Civil |
| FLT-RFB-C1130 |  | Superstructure - RCC / steel erection |  | 58d | 2026-07-22 A | 2026-10-10 | FLT-RFB-C1120, FLT-RFB-P1060 SS+15d | 43% | 34d | 2026-07-10 | 2026-09-16 | 135d | 0d | Structural |
| FLT-RFB-C1150 |  | Masonry & plastering |  | 34d | 2026-08-14 A | 2026-09-29 | FLT-RFB-C1130 SS+20d | 40% | 25d | 2026-08-03 | 2026-09-11 | 155d | 27d | Civil |
| FLT-RFB-C1140 |  | Roofing & cladding |  | 23d | 2026-10-06 | 2026-11-02 | FLT-RFB-C1130 FS-5d |  |  |  |  | 147d | 0d | Structural |
| FLT-RFB-C1160 |  | MEP installation |  | 53d | 2026-11-03 | 2027-01-05 | FLT-RFB-C1150 SS+10d, FLT-RFB-P1080 |  |  |  |  | 113d | 0d | MEP |
| FLT-RFB-C1170 |  | Finishes - flooring & painting |  | 32d | 2026-11-03 | 2026-12-10 | FLT-RFB-C1150, FLT-RFB-C1140 |  |  |  |  | 147d | 34d | Architecture |
| FLT-RFB-C1180 |  | Testing & commissioning |  | 13d | 2027-01-06 | 2027-01-20 | FLT-RFB-C1160, FLT-RFB-C1170 FF |  |  |  |  | 113d | 0d | MEP |
| FLT-RFB-C1190 |  | Building handover to client | milestone | 0d | 2027-01-20 | 2027-01-20 | FLT-RFB-C1180 |  |  |  |  | 113d |  | Milestone |
